# Children's Book Schedule

Schedule from MS Project, 2015-04-06 to 2015-12-03, costs in $, A marks actual dates.
Lucerne Publishing

## Calendars

- Standard: Mon-Fri 08:00-12:00, 13:00-17:00; Sat-Sun off.
- Monday-Wednesday: Mon-Wed 08:00-12:00, 13:00-17:00; Thu-Sun off.

## Resources

| Resource | Group | Unit | Rate |
| --- | --- | --- | --- |
| Carole Poland | Editorial |  | 52.5 |
| Biên tập viên | Editorial |  | 45 |
| Dan Jump | Design |  | 75.5 |
| Huỳnh Phương Nam | Editorial |  | 38.75 |
| Jane Dow | Editorial |  | 63.25 |
| Jun Cao | Editorial |  | 42 |
| Luis Sousa | Design |  | 70 |
| Printing Service | Production |  |  |
| Travel | Other |  |  |
| Tạ Thanh Hải | Other |  |  |
| Color Setting Services | Production |  |  |
| Bound galley proofs | Production | copies | 15 |

## Schedule

| ID | WBS | Task | Type | Duration | Start | Finish | Predecessors | Complete | Remaining | Baseline start | Baseline finish | Baseline duration | Total slack | Constraint | Deadline | Resources | Work | Actual work | Cost | Baseline cost | Actual cost | Editorial Focus |
| --- | --- | --- | --- | --- | --- | --- | --- | --- | --- | --- | --- | --- | --- | --- | --- | --- | --- | --- | --- | --- | --- | --- |
| 1 | 1 | **Editorial staff meeting** |  | 82.12d | 2015-04-13 A | 2015-08-05 |  | 37% | 51.87d | 2015-04-13 | 2015-07-06 | 60.12d | 86.88d |  |  |  | 45.5h | 24.5h | 2,223 | 2,223 | 1,197 |  |
| 2 | 1.1 | Editorial staff meeting 1 |  | 1h | 2015-04-13 A | 2015-04-13 A |  | 100% |  | 2015-04-13 | 2015-04-13 | 1h |  | start no earlier than 2015-04-13 |  | Carole Poland; Jun Cao; Huỳnh Phương Nam; Dan Jump [50%] | 3.5h | 3.5h | 171 | 171 | 171 |  |
| 3 | 1.2 | Editorial staff meeting 2 |  | 1h | 2015-04-20 A | 2015-04-20 A |  | 100% |  | 2015-04-20 | 2015-04-20 | 1h |  | start no earlier than 2015-04-20 |  | Carole Poland; Jun Cao; Huỳnh Phương Nam; Dan Jump [50%] | 3.5h | 3.5h | 171 | 171 | 171 |  |
| 4 | 1.3 | Editorial staff meeting 3 |  | 1h | 2015-04-27 A | 2015-04-27 A |  | 100% |  | 2015-04-27 | 2015-04-27 | 1h |  | start no earlier than 2015-04-27 |  | Carole Poland; Jun Cao; Huỳnh Phương Nam; Dan Jump [50%] | 3.5h | 3.5h | 171 | 171 | 171 |  |
| 5 | 1.4 | Editorial staff meeting 4 |  | 1h | 2015-05-04 A | 2015-05-04 A |  | 100% |  | 2015-05-04 | 2015-05-04 | 1h |  | start no earlier than 2015-05-04 |  | Carole Poland; Jun Cao; Huỳnh Phương Nam; Dan Jump [50%] | 3.5h | 3.5h | 171 | 171 | 171 |  |
| 6 | 1.5 | Editorial staff meeting 5 |  | 1h | 2015-05-11 A | 2015-05-11 A |  | 100% |  | 2015-05-11 | 2015-05-11 | 1h |  | start no earlier than 2015-05-11 |  | Carole Poland; Jun Cao; Huỳnh Phương Nam; Dan Jump [50%] | 3.5h | 3.5h | 171 | 171 | 171 |  |
| 7 | 1.6 | Editorial staff meeting 6 |  | 1h | 2015-05-18 A | 2015-05-18 A |  | 100% |  | 2015-05-18 | 2015-05-18 | 1h |  | start no earlier than 2015-05-18 |  | Carole Poland; Jun Cao; Huỳnh Phương Nam; Dan Jump [50%] | 3.5h | 3.5h | 171 | 171 | 171 |  |
| 8 | 1.7 | Editorial staff meeting 7 |  | 1h | 2015-05-25 A | 2015-05-25 A |  | 100% |  | 2015-05-25 | 2015-05-25 | 1h |  | start no earlier than 2015-05-25 |  | Carole Poland; Jun Cao; Huỳnh Phương Nam; Dan Jump [50%] | 3.5h | 3.5h | 171 | 171 | 171 |  |
| 9 | 1.8 | Editorial staff meeting 8 |  | 2h | 2015-08-04 | 2015-08-05 |  |  |  | 2015-06-01 | 2015-06-01 | 1h | 86.88d | start no earlier than 2015-08-04 |  | Carole Poland; Jun Cao; Huỳnh Phương Nam; Dan Jump [50%] | 3.5h |  | 171 | 171 |  |  |
| 10 | 1.9 | Editorial staff meeting 9 |  | 2h | 2015-08-04 | 2015-08-05 |  |  |  | 2015-06-08 | 2015-06-08 | 1h | 86.88d | start no earlier than 2015-08-04 |  | Carole Poland; Jun Cao; Huỳnh Phương Nam; Dan Jump [50%] | 3.5h |  | 171 | 171 |  |  |
| 11 | 1.10 | Editorial staff meeting 10 |  | 2h | 2015-08-04 | 2015-08-05 |  |  |  | 2015-06-15 | 2015-06-15 | 1h | 86.88d | start no earlier than 2015-08-04 |  | Carole Poland; Jun Cao; Huỳnh Phương Nam; Dan Jump [50%] | 3.5h |  | 171 | 171 |  |  |
| 12 | 1.11 | Editorial staff meeting 11 |  | 2h | 2015-08-04 | 2015-08-05 |  |  |  | 2015-06-22 | 2015-06-22 | 1h | 86.88d | start no earlier than 2015-08-04 |  | Carole Poland; Jun Cao; Huỳnh Phương Nam; Dan Jump [50%] | 3.5h |  | 171 | 171 |  |  |
| 13 | 1.12 | Editorial staff meeting 12 |  | 2h | 2015-08-04 | 2015-08-05 |  |  |  | 2015-06-29 | 2015-06-29 | 1h | 86.88d | start no earlier than 2015-08-04 |  | Carole Poland; Jun Cao; Huỳnh Phương Nam; Dan Jump [50%] | 3.5h |  | 171 | 171 |  |  |
| 14 | 1.13 | Editorial staff meeting 13 |  | 2h | 2015-08-04 | 2015-08-05 |  |  |  | 2015-07-06 | 2015-07-06 | 1h | 86.88d | start no earlier than 2015-08-04 |  | Carole Poland; Jun Cao; Huỳnh Phương Nam; Dan Jump [50%] | 3.5h |  | 171 | 171 |  |  |
| 15 | 2 | **Acquisition** |  | 37d | 2015-04-06 A | 2015-05-26 A |  | 100% |  | 2015-04-06 | 2015-05-25 | 35.5d |  |  |  |  | 468h | 468h | 18,804 | 18,264 | 18,804 |  |
| 16 | 2.1 | Manuscript received | milestone | 0d | 2015-04-06 A | 2015-04-06 A |  | 100% |  | 2015-04-06 | 2015-04-06 | 0d |  |  |  |  |  |  |  |  |  |  |
| 17 | 2.2 | Content edit |  | 15d | 2015-04-06 A | 2015-04-30 A | 16 | 100% |  | 2015-04-06 | 2015-04-30 | 15d |  |  |  | Carole Poland | 120h | 120h | 6,300 | 6,300 | 6,300 | Full developmental edit |
| 18 | 2.3 | Original art review |  | 10.25d | 2015-04-23 A | 2015-05-07 A | 17FS-5d | 100% |  | 2015-04-23 | 2015-05-07 | 10.25d |  |  |  | Huỳnh Phương Nam; Jane Dow | 164h | 164h | 8,364 | 8,364 | 8,364 |  |
| 19 | 2.4 | Author review of content edit |  | 13.5d | 2015-05-07 A | 2015-05-26 A | 17, 18 | 100% |  | 2015-05-07 | 2015-05-25 | 12d |  |  |  | Tạ Thanh Hải; Biên tập viên | 184h | 184h | 4,140 | 3,600 | 4,140 | Incorp must-fix issues |
| 20 | 2.5 | Handoff to Editorial | milestone | 0d | 2015-05-26 A | 2015-05-26 A | 19 | 100% |  | 2015-05-25 | 2015-05-25 | 0d |  |  | 2015-05-29 | Carole Poland |  |  |  |  |  |  |
| 21 | 3 | **Editorial** |  | 28.4d | 2015-05-27 A | 2015-07-06 A | 15 | 100% |  | 2015-05-25 | 2015-07-03 | 29.12d |  |  |  |  | 413h | 413h | 16,201 | 15,670 | 16,201 |  |
| 22 | 3.1 | Organize manuscript for copyedit |  | 5d | 2015-05-27 A | 2015-06-02 A |  | 100% |  | 2015-05-25 | 2015-06-01 | 5.12d |  |  |  | Huỳnh Phương Nam; Dan Jump [50%] | 63h | 63h | 3,213 | 3,060 | 3,213 | Address outstanding line edit issues |
| 23 | 3.2 | Copyedit |  | 10.5d | 2015-06-03 A | 2015-06-17 A | 22 | 100% |  | 2015-06-01 | 2015-06-16 | 11.25d |  |  |  | Biên tập viên [200%] | 188h | 188h | 8,460 | 8,100 | 8,460 | Style Guide compliance |
| 24 | 3.3 | Author review of copyedit |  | 10.2d | 2015-06-17 A | 2015-07-01 A | 23 | 100% |  | 2015-06-16 | 2015-06-30 | 10d |  |  |  | Tạ Thanh Hải; Biên tập viên [25%] | 102h | 102h | 918 | 900 | 918 | Incorp must-fix issues |
| 25 | 3.4 | Copyedit incorp |  | 5.12d | 2015-06-29 A | 2015-07-06 A | 24FS-2.5% | 100% |  | 2015-06-26 | 2015-07-03 | 5.12d |  |  |  | Carole Poland; Dan Jump [50%] | 60h | 60h | 3,610 | 3,610 | 3,610 | Incorp must-fix issues |
| 26 | 3.5 | Handoff to Production | milestone | 0d | 2015-07-06 A | 2015-07-06 A | 25 | 100% |  | 2015-07-03 | 2015-07-03 | 0d |  |  |  | Huỳnh Phương Nam |  |  |  |  |  |  |

| ID | WBS | Task | Type | Duration | Start | Finish | Predecessors | Complete | Remaining | Baseline start | Baseline finish | Baseline duration | Total slack | Free slack | Constraint | Calendar | Resources | Work | Actual work | Cost | Baseline cost | Actual cost |
| --- | --- | --- | --- | --- | --- | --- | --- | --- | --- | --- | --- | --- | --- | --- | --- | --- | --- | --- | --- | --- | --- | --- |
| 27 | 4 | **Design and Production** |  | 62.6d | 2015-07-06 A | 2015-09-30 | 21 | 43% | 35.73d | 2015-07-03 | 2015-09-23 | 58.25d | 2d |  |  |  |  | 927.6h | 431.6h | 48,863.5 | 46,679 | 23,544.5 |
| 28 | 4.1 | Set pages |  | 15d | 2015-07-06 A | 2015-07-27 A |  | 100% |  | 2015-07-03 | 2015-07-24 | 15d |  |  |  |  | Jane Dow | 120h | 120h | 7,590 | 7,590 | 7,590 |
| 29 | 4.2 | Interior illustration design |  | 17.6d | 2015-07-06 A | 2015-07-29 A | 28SS | 100% |  | 2015-07-03 | 2015-07-24 | 15.25d |  |  |  |  | Luis Sousa; Huỳnh Phương Nam | 279.6h | 279.6h | 15,234.5 | 13,050 | 15,234.5 |
| 30 | 4.3 | **Đánh giá các trang lần thứ 1** |  | 32d | 2015-07-30 A | 2015-09-11 | 29 | 7% | 29.87d | 2015-07-24 | 2015-09-04 | 30d | 3.5d | 0d |  |  |  | 320h | 32h | 13,860 | 13,860 | 720 |
| 31 | 4.3.1 | Hiệu đỉnh và lập chỉ mục |  | 10d | 2015-07-30 A | 2015-08-14 |  | 20% | 8d | 2015-07-24 | 2015-08-07 | 10d | 3.5d | 0d | start no earlier than 2015-07-17 |  | Tạ Thanh Hải; Biên tập viên | 100h | 32h | 900 | 900 | 720 |
| 32 | 4.3.2 | Kết hợp đánh giá các trang lần thứ 1 |  | 10d | 2015-08-17 | 2015-08-28 | 31 |  |  | 2015-08-07 | 2015-08-21 | 10d | 3.5d | 0d |  |  | Huỳnh Phương Nam; Dan Jump [50%] | 120h |  | 6,120 | 6,120 |  |
| 33 | 4.3.3 | Gừi các trang đã được hiệu đỉnh đến bộ phận | milestone | 0d | 2015-08-28 | 2015-08-28 | 32 |  |  | 2015-08-21 | 2015-08-21 | 0d | 3.5d | 0d |  |  | Huỳnh Phương Nam |  |  |  |  |  |
| 34 | 4.3.4 | Nhập các chỉnh sửa trang và lập |  | 5d | 2015-08-31 | 2015-09-04 | 33 |  |  | 2015-08-21 | 2015-08-28 | 5d | 3.5d | 0d |  |  | Jane Dow; Dan Jump [50%] | 60h |  | 4,040 | 4,040 |  |
| 35 | 4.3.5 | Thiết kế trang |  | 5d | 2015-09-07 | 2015-09-11 | 34 |  |  | 2015-08-28 | 2015-09-04 | 5d | 3.5d | 0d |  |  | Luis Sousa | 40h |  | 2,800 | 2,800 |  |
| 36 | 4.4 | **Đánh giá các trang lần thứ 2** |  | 13d | 2015-09-14 | 2015-09-30 |  |  |  | 2015-09-04 | 2015-09-23 | 13d | 2d |  |  |  |  | 120h |  | 6,345 | 6,345 |  |
| 37 | 4.4.1 | Proof and review |  | 6.5d | 2015-09-14 | 2015-09-22 | 35 |  |  | 2015-09-04 | 2015-09-15 | 6.5d | 3.5d | 0d |  |  | Huỳnh Phương Nam | 40h |  | 1,800 | 1,800 |  |
| 38 | 4.4.2 | Send proofed pages to Production | milestone | 0d | 2015-09-22 | 2015-09-22 | 37 |  |  | 2015-09-15 | 2015-09-15 | 0d | 3.5d | 0.5d |  |  | Huỳnh Phương Nam |  |  |  |  |  |
| 39 | 4.4.3 | Final review |  | 5d | 2015-09-24 | 2015-09-30 | 38 |  |  | 2015-09-16 | 2015-09-23 | 5d | 2d |  |  |  | Jane Dow; Huỳnh Phương Nam [50%]; Carole Poland [50%]; Bound galley proofs [20 copies] | 80h |  | 4,545 | 4,545 |  |
| 40 | 4.5 | **Design book's companion website** |  | 10d | 2015-09-14 | 2015-09-25 | 30 |  |  | 2015-09-04 | 2015-09-18 | 10d | 5d |  |  |  |  | 88h |  | 5,834 | 5,834 |  |
| 41 | 4.5.1 | Create mockup |  | 4.5d | 2015-09-14 | 2015-09-23 |  |  |  | 2015-09-04 | 2015-09-16 | 4.5d | 5d | 0d |  |  | Luis Sousa; Huỳnh Phương Nam | 48h |  | 2,610 | 2,610 |  |
| 42 | 4.5.2 | Review with author |  | 2d | 2015-09-24 | 2015-09-25 | 41 |  |  | 2015-09-16 | 2015-09-18 | 2d | 5d |  |  |  | Luis Sousa; Tạ Thanh Hải; Travel [0.1%]; Dan Jump [50%] | 40h |  | 3,224 | 3,224 |  |
| 43 | 5 | **Color prep and printing** |  | 44d | 2015-10-05 | 2015-12-03 | 40 |  |  | 2015-09-23 | 2015-11-26 | 46d | 0d |  |  |  |  | 328h |  | 5,310 | 5,310 |  |
| 44 | 5.1 | Send to color house |  | 1d | 2015-10-05 | 2015-10-05 | 36 |  |  | 2015-09-23 | 2015-09-28 | 1d | 0d |  |  | Monday-Wednesday | Huỳnh Phương Nam | 8h |  | 310 | 310 |  |
| 45 | 5.2 | Generate proofs |  | 10d | 2015-10-06 | 2015-10-19 | 44 |  |  | 2015-09-28 | 2015-10-12 | 10d | 0d |  |  |  | Color Setting Services | 80h |  | 5,000 | 5,000 |  |
| 46 | 5.3 | Print and ship |  | 30d | 2015-10-23 | 2015-12-03 | 45FS+3d |  |  | 2015-10-15 | 2015-11-26 | 30d | 0d |  |  |  | Printing Service | 240h |  |  |  |  |
| 47 | 6 | **Book launch prep** |  | 22d | 2015-10-06 | 2015-11-04 |  |  |  | 2015-09-28 | 2015-10-28 | 22d | 21d |  |  |  |  | 212h |  | 9,442 | 9,442 |  |
| 48 | 6.1 | Launch planning |  | 5d | 2015-10-06 | 2015-10-12 | 44 |  |  | 2015-09-28 | 2015-10-05 | 5d | 21d | 0d |  |  | Carole Poland [50%]; Jane Dow | 36h |  | 2,062 | 2,062 |  |
| 49 | 6.2 | Assign launch team members |  | 1d | 2015-10-13 | 2015-10-13 | 48 |  |  | 2015-10-05 | 2015-10-06 | 1d | 21d | 0d |  |  | Carole Poland | 8h |  | 420 | 420 |  |
| 50 | 6.3 | Complete author questionnaire |  | 5d | 2015-10-14 | 2015-10-20 | 49 |  |  | 2015-10-06 | 2015-10-13 | 5d | 21d | 0d |  |  | Huỳnh Phương Nam; Tạ Thanh Hải; Travel [0.1%] | 80h |  | 3,550 | 3,550 |  |
| 51 | 6.4 | Schedule author interviews |  | 1d | 2015-10-21 | 2015-10-21 | 50 |  |  | 2015-10-13 | 2015-10-14 | 1d | 21d | 0d |  |  | Huỳnh Phương Nam | 8h |  | 310 | 310 |  |
| 52 | 6.5 | Design and order marketing material |  | 10d | 2015-10-22 | 2015-11-04 | 51 |  |  | 2015-10-14 | 2015-10-28 | 10d | 21d |  |  |  | Huỳnh Phương Nam | 80h |  | 3,100 | 3,100 |  |
