# Simple Tracking_Start

Schedule from MS Project, 2015-01-05 to 2015-02-24, status date 2015-01-05, costs in $, A marks actual dates.
New book launch schedule
Lucerne Publishing
New children's book for spring release

## Calendars

- Standard: Mon-Fri 08:00-12:00, 13:00-17:00; Sat-Sun off. Exceptions (off unless hours are given): 2015-01-22 (Staff at morale event).

## Resources

| Resource | Rate | Notes |
| --- | --- | --- |
| Phạm Tấn Hoàng | 42 |  |
| Trương Thanh Mai | 27.5 | Sharons standard pay rate is adjusted for her half-time work schedule. |
| Lại Hữu Diệp | 67.5 | Toby worked on launch campaigns for Toni Poes previous two books. |
| Tạ Thanh Hải |  |  |
| Nguyễn Thúy An | 55 |  |
| Copyeditors | 45 |  |
| Travel |  |  |
| Trần Thanh Điện | 52.5 |  |
| Dan Jump | 75.5 |  |
| Hany Morcos | 38.75 |  |
| Lê Xuân Thy | 55 |  |
| John Evans | 69.5 |  |
| Katie Jordan | 48 |  |
| Luis Sousa | 70 |  |
| Printing Service |  |  |
| Robin Wood | 44 |  |
| Vikas Jain | 22 |  |
| William Flash |  |  |

## Schedule

| ID | WBS | Task | Type | Duration | Start | Finish | Predecessors | Complete | Remaining | Baseline start | Baseline finish | Baseline duration | Total slack | Resources | Work | Actual work | Cost | Baseline cost | Actual cost |
| --- | --- | --- | --- | --- | --- | --- | --- | --- | --- | --- | --- | --- | --- | --- | --- | --- | --- | --- | --- |
| 1 | 1 | **Giai đoạn lập kế hoạch** |  | 11d | 2015-01-05 A | 2015-01-19 A |  | 100% |  | 2015-01-05 | 2015-01-19 | 11d |  |  | 248h | 248h | 11,900 | 11,900 | 11,900 |
| 2 | 1.1 | Chỉ định các thành viên trong nhóm phát hành |  | 1d | 2015-01-05 A | 2015-01-05 A |  | 100% |  | 2015-01-05 | 2015-01-05 | 1d |  | Trần Thanh Điện | 8h | 8h | 420 | 420 | 420 |
| 3 | 1.2 | Hoàn thành bảng câu hỏi về tác giả |  | 1w | 2015-01-06 A | 2015-01-12 A | 2 | 100% |  | 2015-01-06 | 2015-01-12 | 1w |  | Tạ Thanh Hải | 40h | 40h |  |  |  |
| 4 | 1.3 | Lên lịch phỏng vấn tác giả |  | 1w | 2015-01-05 A | 2015-01-12 A | 2 | 100% |  | 2015-01-05 | 2015-01-12 | 1w |  | Phạm Tấn Hoàng | 40h | 40h | 1,680 | 1,680 | 1,680 |
| 5 | 1.4 | Thiết kế và đặt hàng tài liệu tiếp thị |  | 2w | 2015-01-06 A | 2015-01-19 A | 2 | 100% |  | 2015-01-06 | 2015-01-19 | 2w |  | Lại Hữu Diệp; Nguyễn Thúy An | 160h | 160h | 9,800 | 9,800 | 9,800 |
| 6 | 1.5 | Lập kế hoạch hoàn tất! | milestone | 0d | 2015-01-19 A | 2015-01-19 A | 5 | 100% |  | 2015-01-19 | 2015-01-19 | 0d |  |  |  |  |  |  |  |
| 7 | 2 | **Giai đoạn ra mắt nội bộ** |  | 13d | 2015-01-20 A | 2015-02-06 A | 1 | 100% |  | 2015-01-20 | 2015-02-06 | 13d |  |  | 332h | 332h | 16,302 | 13,942 | 16,302 |
| 8 | 2.1 | Khởi động cuộc họp ra mắt sách |  | 1d | 2015-01-20 A | 2015-01-20 A |  | 100% |  | 2015-01-20 | 2015-01-20 | 1d |  | Trương Thanh Mai [50%]; Lại Hữu Diệp | 12h | 12h | 650 | 650 | 650 |
| 9 | 2.2 | Soạn báo cáo lời - lỗ về sách |  | 3d | 2015-01-21 A | 2015-01-26 A | 8 | 100% |  | 2015-01-21 | 2015-01-23 | 2d |  | Trần Thanh Điện | 24h | 24h | 1,260 | 840 | 1,260 |
| 10 | 2.3 | Lập kế hoạch cho hành trình của tác giả |  | 7d | 2015-01-20 A | 2015-01-29 A | 8 | 100% |  | 2015-01-21 | 2015-01-29 | 6d |  | Lê Xuân Thy | 56h | 56h | 3,080 | 2,640 | 3,080 |
| 11 | 2.4 | Chuẩn bị kênh bán hàng |  | 7d | 2015-01-21 A | 2015-01-30 A | 8 | 100% |  | 2015-01-21 | 2015-01-28 | 1w |  | Nguyễn Thúy An; Hany Morcos | 112h | 112h | 5,250 | 3,750 | 5,250 |
| 12 | 2.5 | Hoàn thàn mẫu ra mắt sách |  | 2d | 2015-01-29 A | 2015-01-30 A | 11 | 100% |  | 2015-01-29 | 2015-01-30 | 2d |  | Lại Hữu Diệp; Vikas Jain | 32h | 32h | 1,432 | 1,432 | 1,432 |
| 13 | 2.6 | Prepare book sales kit |  | 1w | 2015-01-29 A | 2015-02-04 A | 8, 11 | 100% |  | 2015-01-29 | 2015-02-04 | 1w |  | Hany Morcos; Nguyễn Thúy An | 80h | 80h | 3,750 | 3,750 | 3,750 |
| 14 | 2.7 | Distribute internal marketing material |  | 2d | 2015-02-05 A | 2015-02-06 A | 13 | 100% |  | 2015-02-05 | 2015-02-06 | 2d |  | Nguyễn Thúy An | 16h | 16h | 880 | 880 | 880 |
| 15 | 3 | **Public Launch Phase** |  | 12d | 2015-02-09 A | 2015-02-24 | 7 | 99% | 0d | 2015-02-09 | 2015-02-24 | 12d | 0d |  | 280h | 280h | 13,352 | 13,352 | 12,552 |
| 16 | 3.1 | **Author travel and appearances** |  | 2d | 2015-02-09 A | 2015-02-10 |  | 99% | 0d | 2015-02-09 | 2015-02-10 | 2d | 10d |  | 16h | 16h | 800 | 800 |  |
| 17 | 3.1.1 | Author radio interview |  | 1d | 2015-02-09 A | 2015-02-09 A |  | 100% |  | 2015-02-09 | 2015-02-09 | 1d |  | Tạ Thanh Hải | 8h | 8h |  |  |  |
| 18 | 3.1.2 | Author reading and signing at book fair |  | 1d | 2015-02-10 A | 2015-02-10 | 17 | 99% | 0d | 2015-02-10 | 2015-02-10 | 1d | 10d | Tạ Thanh Hải; Travel [0.1%] | 8h | 8h | 800 | 800 |  |
| 19 | 3.2 | Distribute advance copies |  | 2d | 2015-02-09 A | 2015-02-10 A |  | 100% |  | 2015-02-09 | 2015-02-10 | 2d |  | Lại Hữu Diệp; Vikas Jain | 32h | 32h | 1,432 | 1,432 | 1,432 |
| 20 | 3.3 | Distribute book sales kit |  | 2d | 2015-02-09 A | 2015-02-10 A |  | 100% |  | 2015-02-09 | 2015-02-10 | 2d |  | Nguyễn Thúy An | 16h | 16h | 880 | 880 | 880 |
| 21 | 3.4 | Coordinate magazine feature articles |  | 7d | 2015-02-11 A | 2015-02-19 A | 20 | 100% |  | 2015-02-11 | 2015-02-19 | 7d |  | Nguyễn Thúy An | 56h | 56h | 3,080 | 3,080 | 3,080 |
| 22 | 3.5 | Launch public web portal for book |  | 1w | 2015-02-11 A | 2015-02-17 A | 20 | 100% |  | 2015-02-11 | 2015-02-17 | 1w |  | Lại Hữu Diệp; Vikas Jain | 80h | 80h | 3,580 | 3,580 | 3,580 |
| 23 | 3.6 | Launch social media programs for book |  | 1w | 2015-02-18 A | 2015-02-24 A | 22 | 100% |  | 2015-02-18 | 2015-02-24 | 1w |  | Lại Hữu Diệp; Vikas Jain | 80h | 80h | 3,580 | 3,580 | 3,580 |
| 24 | 3.7 | Launch complete! | milestone | 0d | 2015-02-24 A | 2015-02-24 A | 21, 22, 23 | 100% |  | 2015-02-24 | 2015-02-24 | 0d |  |  |  |  |  |  |  |

Notes:
- 19: Get recipient list from publicist
