# Children's book schedule

Schedule from MS Project, 2025-10-12 to 2026-05-22, costs in $, A marks actual dates.
Lucerne Publishing

## Calendars

- Standard: Mon-Fri 08:00-12:00, 13:00-17:00; Sat-Sun off.
- Monday-Wednesday: Mon-Wed 08:00-12:00, 13:00-17:00; Thu-Sun off.

## Resources

| Resource | Rate | Notes |
| --- | --- | --- |
| Carole Poland | 52.5 |  |
| Color Setting Services |  |  |
| Copyeditors | 45 |  |
| Dan Jump | 75.5 |  |
| Hany Morcos | 38.75 |  |
| Jane Dow | 55 |  |
| John Evans | 69.5 |  |
| Jun Cao | 42 |  |
| Katie Jordan | 48 |  |
| Luis Sousa | 70 |  |
| Printing Service |  |  |
| Robin Wood | 44 |  |
| Sharon Salavaria | 27.5 | Sharon's standard pay rate is adjusted for her half-time work schedule. |
| Tad Orman |  |  |
| Toby Nixon | 67.5 | Toby worked on launch campaigns for Toni Poe's previous two books. |
| Travel |  |  |
| Vikas Jain | 22 |  |
| William Flash |  |  |
| Zac Woodall | 55 |  |

## Schedule

| ID | WBS | Task | Type | Duration | Start | Finish | Predecessors | Complete | Baseline start | Baseline finish | Baseline duration | Constraint | Resources | Work | Actual work | Cost | Baseline cost | Actual cost |
| --- | --- | --- | --- | --- | --- | --- | --- | --- | --- | --- | --- | --- | --- | --- | --- | --- | --- | --- |
| 1 | 1 | **Acquisition** |  | 28d | 2025-10-12 A | 2025-11-19 A |  | 100% | 2025-10-12 | 2025-11-19 | 28d |  |  | 220h | 220h | 7,200 | 7,200 | 7,200 |
| 2 | 1.1 | Manuscript received | milestone | 0d | 2025-10-12 A | 2025-10-12 A |  | 100% | 2025-10-12 | 2025-10-12 | 0d |  |  |  |  |  |  |  |
| 3 | 1.2 | Content edit |  | 15d | 2025-10-13 A | 2025-11-05 A | 2 | 100% | 2025-10-13 | 2025-11-05 | 15d |  | Carole Poland | 120h | 120h | 6,300 | 6,300 | 6,300 |
| 4 | 1.3 | Author review of content edit |  | 10d | 2025-11-06 A | 2025-11-19 A | 3 | 100% | 2025-11-06 | 2025-11-19 | 10d |  | Tad Orman; Copyeditors [25%] | 100h | 100h | 900 | 900 | 900 |
| 5 | 1.4 | Handoff to Editorial | milestone | 0d | 2025-11-19 A | 2025-11-19 A | 4 | 100% | 2025-11-19 | 2025-11-19 | 0d |  | Carole Poland |  |  |  |  |  |
| 6 | 2 | **Editorial** |  | 37.5d | 2025-11-20 A | 2026-01-12 A | 1 | 100% | 2025-11-20 | 2026-01-12 | 37.5d |  |  | 420h | 420h | 14,800 | 14,800 | 14,800 |
| 7 | 2.1 | Organize manuscript for copyedit |  | 5d | 2025-11-20 A | 2025-11-26 A |  | 100% | 2025-11-20 | 2025-11-26 | 5d |  | Hany Morcos | 40h | 40h | 1,550 | 1,550 | 1,550 |
| 8 | 2.2 | Copyedit |  | 20d | 2025-11-27 A | 2025-12-24 A | 7 | 100% | 2025-11-27 | 2025-12-24 | 20d |  | Copyeditors [150%] | 240h | 240h | 10,800 | 10,800 | 10,800 |
| 9 | 2.3 | Author review of copyedit |  | 10d | 2025-12-25 A | 2026-01-07 A | 8 | 100% | 2025-12-25 | 2026-01-07 | 10d |  | Tad Orman; Copyeditors [25%] | 100h | 100h | 900 | 900 | 900 |
| 10 | 2.4 | Copyedit incorp |  | 5d | 2026-01-05 A | 2026-01-12 A | 9FS-2.5% | 100% | 2026-01-05 | 2026-01-12 | 5d |  | Hany Morcos | 40h | 40h | 1,550 | 1,550 | 1,550 |
| 11 | 2.5 | Handoff to Production | milestone | 0d | 2026-01-12 A | 2026-01-12 A | 10 | 100% | 2026-01-12 | 2026-01-12 | 0d |  | Hany Morcos |  |  |  |  |  |
| 12 | 3 | **Design and Production** |  | 50d | 2026-01-12 A | 2026-03-23 A | 6 | 100% | 2026-01-12 | 2026-03-23 | 50d |  |  | 676h | 676h | 32,650 | 32,650 | 32,650 |
| 13 | 3.1 | Set pages |  | 15d | 2026-01-12 A | 2026-02-02 A |  | 100% | 2026-01-12 | 2026-02-02 | 15d |  | Jane Dow | 120h | 120h | 6,600 | 6,600 | 6,600 |
| 14 | 3.2 | Interior illustration design |  | 15d | 2026-01-12 A | 2026-02-02 A | 13SS | 100% | 2026-01-12 | 2026-02-02 | 15d |  | Luis Sousa | 120h | 120h | 8,400 | 8,400 | 8,400 |
| 15 | 3.3 | **1st Pages review** |  | 25d | 2026-02-02 A | 2026-03-09 A | 14 | 100% | 2026-02-02 | 2026-03-09 | 25d |  |  | 220h | 220h | 7,450 | 7,450 | 7,450 |
| 16 | 3.3.1 | Proofread and index |  | 10d | 2026-02-02 A | 2026-02-16 A |  | 100% | 2026-02-02 | 2026-02-16 | 10d | start no earlier than 2015-07-17 | Tad Orman; Copyeditors | 100h | 100h | 900 | 900 | 900 |
| 17 | 3.3.2 | Incorporate 1st Pages review |  | 5d | 2026-02-16 A | 2026-02-23 A | 16 | 100% | 2026-02-16 | 2026-02-23 | 5d |  | Hany Morcos | 40h | 40h | 1,550 | 1,550 | 1,550 |
| 18 | 3.3.3 | Send proofed pages to Production | milestone | 0d | 2026-02-23 A | 2026-02-23 A | 17 | 100% | 2026-02-23 | 2026-02-23 | 0d |  | Hany Morcos |  |  |  |  |  |
| 19 | 3.3.4 | Enter page corrections and index |  | 5d | 2026-02-23 A | 2026-03-02 A | 18 | 100% | 2026-02-23 | 2026-03-02 | 5d |  | Jane Dow | 40h | 40h | 2,200 | 2,200 | 2,200 |
| 20 | 3.3.5 | Cover design |  | 5d | 2026-03-02 A | 2026-03-09 A | 19 | 100% | 2026-03-02 | 2026-03-09 | 5d |  | Luis Sousa | 40h | 40h | 2,800 | 2,800 | 2,800 |
| 21 | 3.4 | **2nd Pages review** |  | 10d | 2026-03-09 A | 2026-03-23 A |  | 100% | 2026-03-09 | 2026-03-23 | 10d |  |  | 160h | 160h | 7,400 | 7,400 | 7,400 |
| 22 | 3.4.1 | Proof and review |  | 5d | 2026-03-09 A | 2026-03-16 A | 20 | 100% | 2026-03-09 | 2026-03-16 | 5d |  | Hany Morcos | 40h | 40h | 1,550 | 1,550 | 1,550 |
| 23 | 3.4.2 | Send proofed pages to Production | milestone | 0d | 2026-03-16 A | 2026-03-16 A | 22 | 100% | 2026-03-16 | 2026-03-16 | 0d |  | Hany Morcos |  |  |  |  |  |
| 24 | 3.4.3 | Final review |  | 5d | 2026-03-16 A | 2026-03-23 A | 23 | 100% | 2026-03-16 | 2026-03-23 | 5d |  | Jane Dow; Hany Morcos; Carole Poland | 120h | 120h | 5,850 | 5,850 | 5,850 |

| ID | WBS | Task | Duration | Start | Finish | Predecessors | Complete | Baseline start | Baseline finish | Baseline duration | Calendar | Resources | Work | Actual work | Cost | Baseline cost | Actual cost |
| --- | --- | --- | --- | --- | --- | --- | --- | --- | --- | --- | --- | --- | --- | --- | --- | --- | --- |
| 25 | 3.5 | **Design book's companion website** | 5d | 2026-03-09 A | 2026-03-16 A |  | 100% | 2026-03-09 | 2026-03-16 | 5d |  |  | 56h | 56h | 2,800 | 2,800 | 2,800 |
| 26 | 3.5.1 | Create mockup | 3d | 2026-03-09 A | 2026-03-12 A | 20 | 100% | 2026-03-09 | 2026-03-12 | 3d |  | Luis Sousa | 24h | 24h | 1,680 | 1,680 | 1,680 |
| 27 | 3.5.2 | Review with author | 2d | 2026-03-12 A | 2026-03-16 A | 26 | 100% | 2026-03-12 | 2026-03-16 | 2d |  | Luis Sousa; Tad Orman | 32h | 32h | 1,120 | 1,120 | 1,120 |
| 28 | 4 | **Color prep and printing** | 44d | 2026-03-23 A | 2026-05-22 A |  | 100% | 2026-03-23 | 2026-05-22 | 44d |  |  | 328h | 328h | 310 | 310 | 310 |
| 29 | 4.1 | Send to color house | 1d | 2026-03-23 A | 2026-03-24 A | 24, 27 | 100% | 2026-03-23 | 2026-03-24 | 1d | Monday-Wednesday | Hany Morcos | 8h | 8h | 310 | 310 | 310 |
| 30 | 4.2 | Generate proofs | 10d | 2026-03-24 A | 2026-04-07 A | 29 | 100% | 2026-03-24 | 2026-04-07 | 10d |  | Color Setting Services | 80h | 80h |  |  |  |
| 31 | 4.3 | Print and ship | 30d | 2026-04-10 A | 2026-05-22 A | 30FS+3d | 100% | 2026-04-10 | 2026-05-22 | 30d |  | Printing Service | 240h | 240h |  |  |  |
